# Impresiones 2009 - Programación de proyecto

Schedule from MS Project, 2009-08-03 to 2009-11-26, status date 2009-10-08, A marks actual dates.

## Calendars

- Standard: Mon-Fri 08:00-12:00, 13:00-17:00; Sat-Sun off.

## Schedule

| ID | WBS | Task | Duration | Start | Finish | Predecessors | Remaining | Total slack | Free slack | Constraint |
| --- | --- | --- | --- | --- | --- | --- | --- | --- | --- | --- |
| 1 | 1.0 | **Preproyecto** | 4d | 2009-08-03 00:00 A | 2009-08-06 19:00 |  | 4d | 0d |  | must start on 2009-08-03 00:00 |
| 2 | 1.1 | Relevar Datos del Cliente | 4h | 2009-08-03 00:00 A | 2009-08-03 12:00 |  | 4h | 0d |  | must start on 2009-08-03 00:00 |
| 3 | 1.2 | Relevar Informacion del Negocio y Requerimientos Preliminares | 12h | 2009-08-03 08:00 | 2009-08-04 12:00 |  |  | 1d | 0.5d | start no earlier than 2009-08-03 08:00 |
| 4 | 1.3 | Documentar informe del negocio | 8h | 2009-08-05 08:00 | 2009-08-05 17:00 | 2, 3 |  | 0.5d |  | start no earlier than 2009-08-05 08:00 |
| 5 | 1.4 | Aprobación del Proyecto | 4h | 2009-08-06 13:00 | 2009-08-06 19:00 | 4 |  | 0d |  | finish no earlier than 2009-08-06 19:00 |
| 6 | 2.0 | **Inicio** | 7.58d | 2009-08-06 08:00 | 2009-08-17 13:39 |  |  | 1d |  | must start on 2009-06-30 00:00 |
| 7 | 2.1 | **I_Modelado del Negocio** | 1.31d | 2009-08-07 08:00 | 2009-08-10 10:30 |  |  | 0d |  | must start on 2009-08-10 00:00 |
| 8 | 2.1.1 | Identificador de Actores y CU de Negocio | 7h | 2009-08-07 08:00 | 2009-08-07 16:00 | 5 |  | 0d |  | start no earlier than 2009-08-06 08:00 |
| 9 | 2.1.2 | Confección de Diag. De UC de Negocio | 3.5h | 2009-08-07 16:00 | 2009-08-10 10:30 | 8 |  | 0d |  | start no earlier than 2009-08-06 08:00 |
| 10 | 2.3 | **I_Requerimientos** | 4.31d | 2009-08-10 10:30 | 2009-08-14 14:00 |  |  | 0d |  | must start on 2009-07-08 00:00 |
| 11 | 2.3.1 | Captura de requerimientos | 10h | 2009-08-10 10:30 | 2009-08-11 13:30 | 9 |  | 0d |  | start no earlier than 2009-08-06 08:00 |
| 12 | 2.3.2 | Definir alcance del producto | 2h | 2009-08-11 13:30 | 2009-08-11 15:30 | 11 |  | 76.71d |  | start no earlier than 2009-08-06 08:00 |
| 13 | 2.3.3 | Especificar Requerimientos | 8h | 2009-08-11 13:30 | 2009-08-12 13:30 | 11 |  | 0d |  | start no earlier than 2009-08-06 08:00 |
| 14 | 2.3.4 | Validar requerimientos con el cliente | 2.5h | 2009-08-12 13:30 | 2009-08-12 16:00 | 13 |  | 0d |  | start no earlier than 2009-08-06 08:00 |
| 15 | 2.3.5 | Especificar requerimientos no funcionales | 2h | 2009-08-11 13:30 | 2009-08-11 15:30 | 11 |  | 76.71d |  | start no earlier than 2009-08-06 08:00 |
| 16 | 2.3.6 | Validar requerimientos con equipo de proyecto | 4h | 2009-08-12 16:00 | 2009-08-13 11:00 | 13, 14 |  | 73.4d | 0d | start no earlier than 2009-08-06 08:00 |
| 17 | 2.3.7 | Prototipar la interfaz | 10h | 2009-08-13 11:00 | 2009-08-14 14:00 | 16 |  | 73.4d | 0.31d | start no earlier than 2009-08-06 08:00 |
| 18 | 2.3.8 | Especificar Reglas de Negocio | 4h | 2009-08-10 10:30 | 2009-08-10 15:30 | 9 |  | 77.71d |  | start no earlier than 2009-08-06 08:00 |
| 19 | 2.2 | **I_Planificación** | 2.12d | 2009-08-12 16:00 | 2009-08-14 17:00 |  |  | 0d |  | must start on 2009-06-30 00:00 |
| 20 | 2.2.1 | Estimar Recursos | 4h | 2009-08-12 16:00 | 2009-08-13 11:00 | 14 |  | 0d |  | start no earlier than 2009-08-06 08:00 |
| 21 | 2.2.2 | Realizar estudio de factibilidad | 4h | 2009-08-13 11:00 | 2009-08-13 16:00 | 20 |  | 0d |  | start no earlier than 2009-08-06 08:00 |
| 22 | 2.2.3 | Realizar la Programación | 1h | 2009-08-13 16:00 | 2009-08-13 17:00 | 21 |  | 74.53d |  | start no earlier than 2009-08-06 08:00 |
| 23 | 2.2.4 | Definir el Alcance del proyecto (WBS) | 2h | 2009-08-14 08:00 | 2009-08-14 10:00 | 26 |  | 0d |  | start no earlier than 2009-08-06 08:00 |
| 24 | 2.2.5 | Identificar Riesgos | 4h | 2009-08-13 16:00 | 2009-08-14 11:00 | 21 |  | 74.15d |  | start no earlier than 2009-08-06 08:00 |
| 25 | 2.2.6 | Definir Equipo de Proyecto | 2h | 2009-08-14 10:00 | 2009-08-14 12:00 | 23, 26, 21 |  | 0d |  | start no earlier than 2009-08-06 08:00 |
| 26 | 2.2.7 | Definir Ciclo de Vida | 1h | 2009-08-13 16:00 | 2009-08-13 17:00 | 21 |  | 0d |  | start no earlier than 2009-08-06 08:00 |
| 27 | 2.2.8 | Realizar Plan de Métricas | 2h | 2009-08-14 13:00 | 2009-08-14 15:00 | 25 |  | 73.4d | 0d | start no earlier than 2009-08-06 08:00 |
| 28 | 2.2.9 | Realizar Plan de Administración de Calidad | 1h | 2009-08-14 13:00 | 2009-08-14 14:00 | 25 |  | 73.9d |  | start no earlier than 2009-08-06 08:00 |
| 29 | 2.2.10 | Realizar Plan de Administración de Configuración | 1h | 2009-08-14 13:00 | 2009-08-14 14:00 | 25 |  | 73.9d |  | start no earlier than 2009-08-06 08:00 |
| 30 | 2.2.11 | Planificar Monitoreo y Control | 2h | 2009-08-14 15:00 | 2009-08-14 17:00 | 27, 25 |  | 73.4d | 0d | start no earlier than 2009-08-06 08:00 |

| ID | WBS | Task | Type | Duration | Start | Finish | Predecessors | Total slack | Free slack | Constraint |
| --- | --- | --- | --- | --- | --- | --- | --- | --- | --- | --- |
| 31 | 2.4 | **I_Análisis y Diseño** |  | 0.94d | 2009-08-14 08:00 | 2009-08-14 16:30 |  | 0.5d |  | must start on 2009-08-14 00:00 |
| 32 | 2.4.1 | Análisis y Diseño de la Arquitectura |  | 3.5h | 2009-08-14 13:00 | 2009-08-14 16:30 | 25 | 0d |  | start no earlier than 2009-08-06 08:00 |
| 33 | 2.4.2 | Análisis y Diseño de las clases | milestone | 0h | 2009-08-14 08:00 | 2009-08-14 08:00 |  | 74.53d |  | start no earlier than 2009-08-14 08:00 |
| 34 | 2.4.3 | Realizar Realizaciones de Casos de Uso | milestone | 0h | 2009-08-14 08:00 | 2009-08-14 08:00 |  | 74.53d |  | start no earlier than 2009-08-14 08:00 |
| 35 | 2.4.4 | Diseño de BD | milestone | 0h | 2009-08-14 08:00 | 2009-08-14 08:00 |  | 74.53d |  | start no earlier than 2009-08-14 08:00 |
| 36 | 2.5 | **I_Implementación** |  | 2.44d | 2009-08-13 08:00 | 2009-08-17 11:30 |  | 73.09d |  | must start on 2009-09-08 00:00 |
| 37 | 2.5.1 | Codificar |  | 4h | 2009-08-14 16:30 | 2009-08-17 11:30 | 17, 32, 38 | 73.09d |  | start no earlier than 2009-08-06 08:00 |
| 38 | 2.5.2 | Preparar ambiente de Diseño |  | 3h | 2009-08-13 16:00 | 2009-08-14 10:00 | 21 | 73.78d | 0.69d | start no earlier than 2009-08-06 08:00 |
| 39 | 2.5.3 | Integrar Software | milestone | 0h | 2009-08-13 08:00 | 2009-08-13 08:00 |  | 75.53d |  | start no earlier than 2009-08-13 08:00 |
| 40 | 2.5.4 | Generar versión de Software | milestone | 0h | 2009-08-13 08:00 | 2009-08-13 08:00 |  | 75.53d |  | start no earlier than 2009-08-13 08:00 |
| 41 | 2.5.5 | Realizar pruebas unitarias | milestone | 0h | 2009-08-13 08:00 | 2009-08-13 08:00 |  | 75.53d |  | start no earlier than 2009-08-13 08:00 |
| 42 | 2.6 | **I_Pruebas** |  | 1.23d | 2009-08-12 08:00 | 2009-08-13 09:48 |  | 75.3d |  | must start on 2009-10-30 00:00 |
| 43 | 2.6.1 | Planificar Pruebas |  | 1.5h | 2009-08-12 16:00 | 2009-08-13 08:30 | 14 | 75.3d | 0d | start no earlier than 2009-08-06 08:00 |
| 44 | 2.6.2 | Diseñar Casos de Prueba |  | 1.3h | 2009-08-13 08:30 | 2009-08-13 09:48 | 43 | 75.3d |  | start no earlier than 2009-08-06 08:00 |
| 45 | 2.6.3 | Implementar Pruebas | milestone | 0h | 2009-08-12 08:00 | 2009-08-12 08:00 |  | 76.53d |  | start no earlier than 2009-08-12 08:00 |
| 46 | 2.6.4 | Realizar Pruebas de Aceptación de Usuario | milestone | 0h | 2009-08-12 08:00 | 2009-08-12 08:00 |  | 76.53d |  | start no earlier than 2009-08-12 08:00 |
| 47 | 2.6.5 | Evaluar Pruebas | milestone | 0h | 2009-08-12 08:00 | 2009-08-12 08:00 |  | 76.53d |  | start no earlier than 2009-08-12 08:00 |
| 48 | 2.7 | **I_Despliegue** |  | 0d | 2009-08-06 08:00 | 2009-08-06 08:00 |  | 80.53d |  | must start on 2009-07-06 00:00 |
| 49 | 2.7.1 | Probar el Producto | milestone | 0h | 2009-08-06 08:00 | 2009-08-06 08:00 |  | 80.53d |  | start no earlier than 2009-08-06 08:00 |
| 50 | 2.7.2 | Empaquetar Software | milestone | 0h | 2009-08-06 08:00 | 2009-08-06 08:00 |  | 80.53d |  | start no earlier than 2009-08-06 08:00 |
| 51 | 2.7.3 | Instalar Software | milestone | 0h | 2009-08-06 08:00 | 2009-08-06 08:00 |  | 80.53d |  | start no earlier than 2009-08-06 08:00 |
| 52 | 2.7.4 | Proveer asistencia de ayuda a los usuarios | milestone | 0h | 2009-08-06 08:00 | 2009-08-06 08:00 |  | 80.53d |  | start no earlier than 2009-08-06 08:00 |
| 53 | 2.7.5 | Formar a los usuarios | milestone | 0h | 2009-08-06 08:00 | 2009-08-06 08:00 |  | 80.53d |  | start no earlier than 2009-08-06 08:00 |
| 54 | 2.8 | **I_Aseguramiento de Calidad del Proceso y del Producto** |  | 0.55d | 2009-08-14 13:00 | 2009-08-17 08:24 |  | 73.47d |  | must start on 2009-07-06 00:00 |
| 55 | 2.8.1 | Generar el Plan de Calidad |  | 4.4h | 2009-08-14 13:00 | 2009-08-17 08:24 | 25 | 73.47d |  | start no earlier than 2009-08-06 08:00 |

| ID | WBS | Task | Type | Duration | Start | Finish | Predecessors | Total slack | Constraint |
| --- | --- | --- | --- | --- | --- | --- | --- | --- | --- |
| 56 | 2.9 | **I_Monitoreo y Control** |  | 0.42d | 2009-08-14 16:30 | 2009-08-17 10:54 |  | 0d | must start on 2009-12-14 00:00 |
| 57 | 2.9.1 | Monitorear el Proyecto |  | 1h | 2009-08-17 08:00 | 2009-08-17 09:00 | 30 | 73.4d | start no earlier than 2009-08-06 08:00 |
| 58 | 2.9.2 | Realizar Reunión de Equipo de Proyecto |  | 1h | 2009-08-14 16:30 | 2009-08-17 08:30 | 32 | 0d | start no earlier than 2009-08-06 08:00 |
| 59 | 2.9.3 | Realizar Reunión de Gerencias |  | 1h | 2009-08-17 08:30 | 2009-08-17 09:30 | 58 | 0d | start no earlier than 2009-08-06 08:00 |
| 60 | 2.9.4 | Realizar Reunión con Cliente |  | 1.4h | 2009-08-17 09:30 | 2009-08-17 10:54 | 59 | 0d | start no earlier than 2009-08-06 08:00 |
| 61 | 2.10 | **I_Gestión de Configuración** |  | 0.58d | 2009-08-17 08:00 | 2009-08-17 13:39 |  | 0.36d | must start on 2009-07-06 00:00 |
| 62 | 2.10.1 | Definición de Líneas base (Base Line) |  | 1h | 2009-08-17 10:54 | 2009-08-17 11:54 | 32, 13, 60 | 0d | start no earlier than 2009-08-06 08:00 |
| 63 | 2.10.2 | Realizar seguimiento de ítems de Configuración. | milestone | 0h | 2009-08-17 08:00 | 2009-08-17 08:00 |  | 73.53d | start no earlier than 2009-08-17 08:00 |
| 64 | 2.10.3 | Realizar versionamiento. |  | 0.76h | 2009-08-17 11:54 | 2009-08-17 13:39 | 62 | 0d | start no earlier than 2009-08-06 08:00 |
| 65 | 2.10.4 | Realizar actualizaciones del repositorio | milestone | 0h | 2009-08-17 11:54 | 2009-08-17 11:54 |  | 73.04d | start no earlier than 2009-08-17 11:54 |
| 66 | 2.10.5 | Realizar control de cambio. | milestone | 0h | 2009-08-17 11:54 | 2009-08-17 11:54 |  | 73.04d | start no earlier than 2009-08-17 11:54 |
| 67 | 2.10.6 | Realizar Auditorías y Revisiones a la Gestión de Configuración. | milestone | 0h | 2009-08-17 11:54 | 2009-08-17 11:54 |  | 73.04d | start no earlier than 2009-08-17 11:54 |
| 68 | 3.0 | **Elaboración** |  | 29.93d | 2009-08-06 08:00 | 2009-09-16 16:27 |  | 7.58d | must start on 2009-07-06 00:00 |
| 69 | 3.1 | **Iteración 1** |  | 18.28d | 2009-08-06 08:00 | 2009-09-01 10:15 |  | 7.58d |  |
| 70 | 3.1 | **E1_Modelado del Negocio** |  | 0.66d | 2009-08-17 13:39 | 2009-08-18 09:56 |  | 0d | must start on 2009-07-06 00:00 |
| 71 | 3.1.1 | Identificador de Actores y CU de Negocio |  | 2h | 2009-08-17 13:39 | 2009-08-17 15:39 | 64 | 0d | start no earlier than 2009-08-06 08:00 |
| 72 | 3.1.2 | Confección de Diag. De UC de Negocio |  | 3.28h | 2009-08-17 15:39 | 2009-08-18 09:56 | 71 | 0d | start no earlier than 2009-08-06 08:00 |
| 73 | 3.2 | **E1_Requerimientos** |  | 5d | 2009-08-18 09:56 | 2009-08-25 09:56 |  | 0d | must start on 2009-07-08 00:00 |
| 74 | 3.2.1 | Captura de requerimientos |  | 16h | 2009-08-18 09:56 | 2009-08-20 09:56 | 72 | 0d | start no earlier than 2009-08-06 08:00 |
| 75 | 3.2.2 | Definir alcance del producto |  | 2h | 2009-08-20 09:56 | 2009-08-20 11:56 | 74 | 70.03d | start no earlier than 2009-08-06 08:00 |
| 76 | 3.2.3 | Especificar Requerimientos |  | 8h | 2009-08-20 09:56 | 2009-08-21 09:56 | 74 | 0d | start no earlier than 2009-08-06 08:00 |
| 77 | 3.2.4 | Validar requerimientos con el cliente |  | 8h | 2009-08-21 09:56 | 2009-08-24 09:56 | 76 | 0d | start no earlier than 2009-08-06 08:00 |
| 78 | 3.2.5 | Especificar requerimientos no funcionales |  | 8h | 2009-08-20 09:56 | 2009-08-21 09:56 | 74 | 69.28d | start no earlier than 2009-08-06 08:00 |
| 79 | 3.2.6 | Validar requerimientos con equipo de proyecto |  | 6h | 2009-08-24 09:56 | 2009-08-24 16:56 | 77 | 0d | start no earlier than 2009-08-06 08:00 |
| 80 | 3.2.7 | Prototipar la interfaz |  | 2h | 2009-08-24 16:56 | 2009-08-25 09:56 | 79 | 67.28d | start no earlier than 2009-08-06 08:00 |
| 81 | 3.2.8 | Especificar Reglas de Negocio |  | 3h | 2009-08-18 09:56 | 2009-08-18 13:56 | 72 | 71.91d | start no earlier than 2009-08-06 08:00 |

| ID | WBS | Task | Type | Duration | Start | Finish | Predecessors | Total slack | Free slack | Constraint |
| --- | --- | --- | --- | --- | --- | --- | --- | --- | --- | --- |
| 82 | 3.3 | **E1_Planificación** |  | 0.66d | 2009-08-24 16:56 | 2009-08-25 14:13 |  | 65.11d |  | must start on 2009-07-13 00:00 |
| 83 | 3.3.1 | Estimar Recursos | milestone | 0h | 2009-08-24 16:56 | 2009-08-24 16:56 |  | 67.53d |  | start no earlier than 2009-08-24 16:56 |
| 84 | 3.3.2 | Realizar estudio de factibilidad | milestone | 0h | 2009-08-24 16:56 | 2009-08-24 16:56 |  | 67.53d |  | start no earlier than 2009-08-24 16:56 |
| 85 | 3.3.3 | Realizar la Programación | milestone | 0h | 2009-08-24 16:56 | 2009-08-24 16:56 |  | 67.53d |  | start no earlier than 2009-08-24 16:56 |
| 86 | 3.3.4 | Definir el Alcance del proyecto (WBS) | milestone | 0h | 2009-08-24 16:56 | 2009-08-24 16:56 |  | 67.53d |  | start no earlier than 2009-08-24 16:56 |
| 87 | 3.3.5 | Identificar Riesgos |  | 3h | 2009-08-24 16:56 | 2009-08-25 10:56 | 79 | 65.11d | 0d | start no earlier than 2009-08-06 08:00 |
| 88 | 3.3.6 | Definir Equipo de Proyecto | milestone | 0h | 2009-08-24 16:56 | 2009-08-24 16:56 |  | 67.53d |  | start no earlier than 2009-08-24 16:56 |
| 89 | 3.3.7 | Definir Ciclo de Vida | milestone | 0h | 2009-08-24 16:56 | 2009-08-24 16:56 |  | 67.53d |  | start no earlier than 2009-08-24 16:56 |
| 90 | 3.3.8 | Realizar Plan de Métricas | milestone | 0h | 2009-08-24 16:56 | 2009-08-24 16:56 |  | 67.53d |  | start no earlier than 2009-08-24 16:56 |
| 91 | 3.3.9 | Realizar Plan de Administración de Calidad | milestone | 0h | 2009-08-24 16:56 | 2009-08-24 16:56 |  | 67.53d |  | start no earlier than 2009-08-24 16:56 |
| 92 | 3.3.10 | Realizar Plan de Administración de Configuración |  | 1h | 2009-08-25 10:56 | 2009-08-25 11:56 | 87 | 65.11d | 0d | start no earlier than 2009-08-06 08:00 |
| 93 | 3.3.11 | Planificar Monitoreo y Control |  | 1.28h | 2009-08-25 11:56 | 2009-08-25 14:13 | 92 | 65.11d | 0d | start no earlier than 2009-08-06 08:00 |
| 94 | 3.4 | **E1_Análisis y Diseño** |  | 3d | 2009-08-24 16:56 | 2009-08-27 16:56 |  | 0d |  | must start on 2009-07-22 00:00 |
| 95 | 3.4.1 | Análisis y Diseño de la Arquitectura |  | 10h | 2009-08-24 16:56 | 2009-08-26 09:56 | 79 | 0d |  | start no earlier than 2009-08-06 08:00 |
| 96 | 3.4.2 | Análisis y Diseño de las clases |  | 8h | 2009-08-26 09:56 | 2009-08-27 09:56 | 95 | 0d |  | start no earlier than 2009-08-06 08:00 |
| 97 | 3.4.3 | Realizar Realizaciones de Casos de Uso |  | 4h | 2009-08-27 09:56 | 2009-08-27 14:56 | 96 | 0d |  | start no earlier than 2009-08-06 08:00 |
| 98 | 3.4.4 | Diseño de BD |  | 6h | 2009-08-27 09:56 | 2009-08-27 16:56 | 96 | 64.53d |  | start no earlier than 2009-08-06 08:00 |
| 99 | 3.5 | **E1_Implementación** |  | 1.32d | 2009-08-27 14:56 | 2009-08-31 08:30 |  | 0d |  | must start on 2009-08-14 00:00 |
| 100 | 3.5.1 | Codificar |  | 4.56h | 2009-08-27 14:56 | 2009-08-28 10:30 | 97 | 0d |  | start no earlier than 2009-08-06 08:00 |
| 101 | 3.5.2 | Preparar ambiente de Diseño | milestone | 0h | 2009-08-28 13:30 | 2009-08-28 13:30 |  | 63.96d |  | start no earlier than 2009-08-28 13:30 |
| 102 | 3.5.3 | Integrar Software |  | 2h | 2009-08-28 13:30 | 2009-08-28 15:30 | 104 | 0d |  | start no earlier than 2009-08-06 08:00 |
| 103 | 3.5.4 | Generar versión de Software |  | 2h | 2009-08-28 15:30 | 2009-08-31 08:30 | 102 | 0d |  | start no earlier than 2009-08-06 08:00 |
| 104 | 3.5.5 | Realizar pruebas unitarias |  | 2h | 2009-08-28 10:30 | 2009-08-28 13:30 | 100 | 0d |  | start no earlier than 2009-08-06 08:00 |
| 105 | 3.6 | **E1_Pruebas** |  | 6.06d | 2009-08-24 08:00 | 2009-09-01 08:30 |  | 3.56d |  | must start on 2009-10-13 00:00 |
| 106 | 3.6.1 | Planificar Pruebas |  | 8h | 2009-08-24 16:56 | 2009-08-25 16:56 | 79 | 2.57d | 0d | start no earlier than 2009-08-06 08:00 |
| 107 | 3.6.2 | Diseñar Casos de Prueba |  | 4h | 2009-08-25 16:56 | 2009-08-26 11:56 | 106 | 2.57d |  | start no earlier than 2009-08-06 08:00 |
| 108 | 3.6.3 | Implementar Pruebas |  | 4h | 2009-08-31 08:30 | 2009-08-31 13:30 | 107, 103 | 0d |  | start no earlier than 2009-08-06 08:00 |
| 109 | 3.6.4 | Realizar Pruebas de Aceptación de Usuario | milestone | 0h | 2009-08-24 08:00 | 2009-08-24 08:00 |  | 68.53d |  | start no earlier than 2009-08-24 08:00 |
| 110 | 3.6.5 | Evaluar Pruebas |  | 4h | 2009-08-31 13:30 | 2009-09-01 08:30 | 108 | 0d |  | start no earlier than 2009-08-06 08:00 |

| ID | WBS | Task | Type | Duration | Start | Finish | Predecessors | Total slack | Constraint |
| --- | --- | --- | --- | --- | --- | --- | --- | --- | --- |
| 111 | 3.7 | **E1_Despliegue** |  | 0d | 2009-08-06 08:00 | 2009-08-06 08:00 |  | 80.53d | must start on 2009-07-06 00:00 |
| 112 | 3.7.1 | Probar el Producto | milestone | 0h | 2009-08-06 08:00 | 2009-08-06 08:00 |  | 17.56d | start no earlier than 2009-08-06 08:00 |
| 113 | 3.7.2 | Empaquetar Software | milestone | 0h | 2009-08-06 08:00 | 2009-08-06 08:00 |  | 17.56d | start no earlier than 2009-08-06 08:00 |
| 114 | 3.7.3 | Instalar Software | milestone | 0h | 2009-08-06 08:00 | 2009-08-06 08:00 |  | 17.56d | start no earlier than 2009-08-06 08:00 |
| 115 | 3.7.4 | Proveer asistencia de ayuda a los usuarios | milestone | 0h | 2009-08-06 08:00 | 2009-08-06 08:00 |  | 17.56d | start no earlier than 2009-08-06 08:00 |
| 116 | 3.7.5 | Formar a los usuarios | milestone | 0h | 2009-08-06 08:00 | 2009-08-06 08:00 |  | 17.56d | start no earlier than 2009-08-06 08:00 |
| 117 | 3.8 | **E1_Aseguramiento de Calidad del Proceso y del Producto** |  | 0.22d | 2009-08-25 10:56 | 2009-08-25 13:42 |  | 66.94d | must start on 2009-07-06 00:00 |
| 118 | 3.8.1 | Generar el Plan de Calidad |  | 1.76h | 2009-08-25 10:56 | 2009-08-25 13:42 | 87 | 66.94d | start no earlier than 2009-08-06 08:00 |
| 119 | 3.9 | **E1_Monitoreo y Control** |  | 1.76d | 2009-08-25 14:13 | 2009-08-27 11:18 |  | 65.11d | must start on 2009-11-18 00:00 |
| 120 | 3.9.1 | Monitorear el Proyecto |  | 1.76d | 2009-08-25 14:13 | 2009-08-27 11:18 | 93 | 65.11d | start no earlier than 2009-08-06 08:00 |
| 121 | 3.9.2 | Realizar Reunión de Equipo de Proyecto | milestone | 0h | 2009-08-25 14:13 | 2009-08-25 14:13 |  | 66.87d | start no earlier than 2009-08-25 14:13 |
| 122 | 3.9.3 | Realizar Reunión de Gerencias | milestone | 0h | 2009-08-25 14:13 | 2009-08-25 14:13 |  | 66.87d | start no earlier than 2009-08-25 14:13 |
| 123 | 3.9.4 | Realizar Reunión con Cliente | milestone | 0h | 2009-08-25 14:13 | 2009-08-25 14:13 |  | 66.87d | start no earlier than 2009-08-25 14:13 |
| 124 | 3.10 | **E1_Gestión de Configuración** |  | 0.22d | 2009-09-01 08:30 | 2009-09-01 10:15 |  | 0d | must start on 2009-07-06 00:00 |
| 125 | 3.10.1 | Definición de Líneas base (Base Line) |  | 0.5h | 2009-09-01 09:15 | 2009-09-01 09:45 | 126 | 0d | start no earlier than 2009-08-06 08:00 |
| 126 | 3.10.2 | Realizar seguimiento de ítems de Configuración. |  | 0.76h | 2009-09-01 08:30 | 2009-09-01 09:15 | 110 | 0d | start no earlier than 2009-08-06 08:00 |
| 127 | 3.10.3 | Realizar versionamiento. | milestone | 0h | 2009-09-01 08:30 | 2009-09-01 08:30 |  | 62.46d | start no earlier than 2009-09-01 08:30 |
| 128 | 3.10.4 | Realizar actualizaciones del repositorio |  | 0.5h | 2009-09-01 09:45 | 2009-09-01 10:15 | 125 | 0d | start no earlier than 2009-08-06 08:00 |
| 129 | 3.10.5 | Realizar control de cambio. | milestone | 0h | 2009-09-01 09:45 | 2009-09-01 09:45 |  | 62.3d | start no earlier than 2009-09-01 09:45 |
| 130 | 3.10.6 | Realizar Auditorías y Revisiones a la Gestión de Configuración. | milestone | 0h | 2009-09-01 09:45 | 2009-09-01 09:45 |  | 62.3d | start no earlier than 2009-09-01 09:45 |
| 131 | 3.2 | **Iteración 2** |  | 29.93d | 2009-08-06 08:00 | 2009-09-16 16:27 |  | 18.28d |  |
| 132 | 3.1 | **E2_Modelado del Negocio** |  | 0d | 2009-08-06 08:00 | 2009-08-06 08:00 |  | 80.53d |  |
| 133 | 3.1.1 | Identificador de Actores y CU de Negocio | milestone | 0h | 2009-08-06 08:00 | 2009-08-06 08:00 |  | 80.53d | start no earlier than 2009-08-06 08:00 |
| 134 | 3.1.2 | Confección de Diag. De UC de Negocio | milestone | 0h | 2009-08-06 08:00 | 2009-08-06 08:00 |  | 80.53d | start no earlier than 2009-08-06 08:00 |

| ID | WBS | Task | Type | Duration | Start | Finish | Predecessors | Total slack | Constraint |
| --- | --- | --- | --- | --- | --- | --- | --- | --- | --- |
| 135 | 3.2 | **E2_Requerimientos** |  | 0d | 2009-08-06 08:00 | 2009-08-06 08:00 |  | 80.53d |  |
| 136 | 3.2.1 | Captura de requerimientos | milestone | 0h | 2009-08-06 08:00 | 2009-08-06 08:00 |  | 80.53d | start no earlier than 2009-08-06 08:00 |
| 137 | 3.2.2 | Definir alcance del producto | milestone | 0h | 2009-08-06 08:00 | 2009-08-06 08:00 |  | 80.53d | start no earlier than 2009-08-06 08:00 |
| 138 | 3.2.3 | Especificar Requerimientos | milestone | 0h | 2009-08-06 08:00 | 2009-08-06 08:00 |  | 80.53d | start no earlier than 2009-08-06 08:00 |
| 139 | 3.2.4 | Validar requerimientos con el cliente | milestone | 0h | 2009-08-06 08:00 | 2009-08-06 08:00 |  | 80.53d | start no earlier than 2009-08-06 08:00 |
| 140 | 3.2.5 | Especificar requerimientos no funcionales | milestone | 0h | 2009-08-06 08:00 | 2009-08-06 08:00 |  | 80.53d | start no earlier than 2009-08-06 08:00 |
| 141 | 3.2.6 | Validar requerimientos con equipo de proyecto | milestone | 0h | 2009-08-06 08:00 | 2009-08-06 08:00 |  | 80.53d | start no earlier than 2009-08-06 08:00 |
| 142 | 3.2.7 | Prototipar la interfaz | milestone | 0h | 2009-08-06 08:00 | 2009-08-06 08:00 |  | 80.53d | start no earlier than 2009-08-06 08:00 |
| 143 | 3.2.8 | Especificar Reglas de Negocio | milestone | 0h | 2009-08-06 08:00 | 2009-08-06 08:00 |  | 80.53d | start no earlier than 2009-08-06 08:00 |
| 144 | 3.3 | **E2_Planificación** |  | 0d | 2009-08-06 08:00 | 2009-08-06 08:00 |  | 80.53d |  |
| 145 | 3.3.1 | Estimar Recursos | milestone | 0h | 2009-08-06 08:00 | 2009-08-06 08:00 |  | 80.53d | start no earlier than 2009-08-06 08:00 |
| 146 | 3.3.2 | Realizar estudio de factibilidad | milestone | 0h | 2009-08-06 08:00 | 2009-08-06 08:00 |  | 80.53d | start no earlier than 2009-08-06 08:00 |
| 147 | 3.3.3 | Realizar la Programación | milestone | 0h | 2009-08-06 08:00 | 2009-08-06 08:00 |  | 80.53d | start no earlier than 2009-08-06 08:00 |
| 148 | 3.3.4 | Definir el Alcance del proyecto (WBS) | milestone | 0h | 2009-08-06 08:00 | 2009-08-06 08:00 |  | 80.53d | start no earlier than 2009-08-06 08:00 |
| 149 | 3.3.5 | Identificar Riesgos | milestone | 0h | 2009-08-06 08:00 | 2009-08-06 08:00 |  | 80.53d | start no earlier than 2009-08-06 08:00 |
| 150 | 3.3.6 | Definir Equipo de Proyecto | milestone | 0h | 2009-08-06 08:00 | 2009-08-06 08:00 |  | 80.53d | start no earlier than 2009-08-06 08:00 |
| 151 | 3.3.7 | Definir Ciclo de Vida | milestone | 0h | 2009-08-06 08:00 | 2009-08-06 08:00 |  | 80.53d | start no earlier than 2009-08-06 08:00 |
| 152 | 3.3.8 | Realizar Plan de Métricas | milestone | 0h | 2009-08-06 08:00 | 2009-08-06 08:00 |  | 80.53d | start no earlier than 2009-08-06 08:00 |
| 153 | 3.3.9 | Realizar Plan de Administración de Calidad | milestone | 0h | 2009-08-06 08:00 | 2009-08-06 08:00 |  | 80.53d | start no earlier than 2009-08-06 08:00 |
| 154 | 3.3.10 | Realizar Plan de Administración de Configuración | milestone | 0h | 2009-08-06 08:00 | 2009-08-06 08:00 |  | 80.53d | start no earlier than 2009-08-06 08:00 |
| 155 | 3.3.11 | Planificar Monitoreo y Control | milestone | 0h | 2009-08-06 08:00 | 2009-08-06 08:00 |  | 80.53d | start no earlier than 2009-08-06 08:00 |
| 156 | 3.4 | **E2_Análisis y Diseño** |  | 1.5d | 2009-09-01 10:15 | 2009-09-02 15:15 |  | 0d |  |
| 157 | 3.4.1 | Análisis y Diseño de la Arquitectura |  | 4h | 2009-09-01 10:15 | 2009-09-01 15:15 | 128 | 0d | start no earlier than 2009-08-06 08:00 |
| 158 | 3.4.2 | Análisis y Diseño de las clases |  | 4h | 2009-09-01 15:15 | 2009-09-02 10:15 | 157 | 0d | start no earlier than 2009-08-06 08:00 |
| 159 | 3.4.3 | Realizar Realizaciones de Casos de Uso |  | 4h | 2009-09-02 10:15 | 2009-09-02 15:15 | 158 | 0d | start no earlier than 2009-08-06 08:00 |
| 160 | 3.4.4 | Diseño de BD |  | 2h | 2009-09-02 10:15 | 2009-09-02 13:15 | 158 | 60.99d | start no earlier than 2009-08-06 08:00 |

| ID | WBS | Task | Type | Duration | Start | Finish | Predecessors | Total slack | Free slack | Constraint |
| --- | --- | --- | --- | --- | --- | --- | --- | --- | --- | --- |
| 161 | 3.5 | **E2_Implementación** |  | 28.58d | 2009-08-06 08:00 | 2009-09-15 13:39 |  | 19.78d |  |  |
| 162 | 3.5.1 | Codificar |  | 48h | 2009-09-02 15:15 | 2009-09-10 15:15 | 159 | 0d |  | start no earlier than 2009-08-06 08:00 |
| 163 | 3.5.2 | Preparar ambiente de Diseño | milestone | 0h | 2009-08-06 08:00 | 2009-08-06 08:00 |  | 80.53d |  | start no earlier than 2009-08-06 08:00 |
| 164 | 3.5.3 | Integrar Software |  | 14h | 2009-09-11 10:15 | 2009-09-15 08:15 | 166 | 0d |  | start no earlier than 2009-08-06 08:00 |
| 165 | 3.5.4 | Generar versión de Software |  | 4.4h | 2009-09-15 08:15 | 2009-09-15 13:39 | 164 | 0d |  | start no earlier than 2009-08-06 08:00 |
| 166 | 3.5.5 | Realizar pruebas unitarias |  | 4h | 2009-09-10 15:15 | 2009-09-11 10:15 | 162 | 0d |  | start no earlier than 2009-08-06 08:00 |
| 167 | 3.6 | **E2_Pruebas** |  | 9.8d | 2009-09-02 15:15 | 2009-09-16 13:39 |  | 8.8d |  |  |
| 168 | 3.6.1 | Planificar Pruebas |  | 6h | 2009-09-02 15:15 | 2009-09-03 13:15 | 159 | 59.49d | 0d | start no earlier than 2009-08-06 08:00 |
| 169 | 3.6.2 | Diseñar Casos de Prueba |  | 4h | 2009-09-03 13:15 | 2009-09-04 08:15 | 168 | 59.49d |  | start no earlier than 2009-08-06 08:00 |
| 170 | 3.6.3 | Implementar Pruebas |  | 4h | 2009-09-15 13:39 | 2009-09-16 08:39 | 165 | 0d |  | start no earlier than 2009-08-06 08:00 |
| 171 | 3.6.4 | Realizar Pruebas de Aceptación de Usuario |  | 2h | 2009-09-15 13:39 | 2009-09-15 15:39 | 165 | 0.25d |  | start no earlier than 2009-08-06 08:00 |
| 172 | 3.6.5 | Evaluar Pruebas |  | 4h | 2009-09-16 08:39 | 2009-09-16 13:39 | 170, 171 | 0d |  | start no earlier than 2009-08-06 08:00 |
| 173 | 3.7 | **E2_Despliegue** |  | 0d | 2009-08-06 08:00 | 2009-08-06 08:00 |  | 80.53d |  |  |
| 174 | 3.7.1 | Probar el Producto | milestone | 0h | 2009-08-06 08:00 | 2009-08-06 08:00 |  | 80.53d |  | start no earlier than 2009-08-06 08:00 |
| 175 | 3.7.2 | Empaquetar Software | milestone | 0h | 2009-08-06 08:00 | 2009-08-06 08:00 |  | 80.53d |  | start no earlier than 2009-08-06 08:00 |
| 176 | 3.7.3 | Instalar Software | milestone | 0h | 2009-08-06 08:00 | 2009-08-06 08:00 |  | 80.53d |  | start no earlier than 2009-08-06 08:00 |
| 177 | 3.7.4 | Proveer asistencia de ayuda a los usuarios | milestone | 0h | 2009-08-06 08:00 | 2009-08-06 08:00 |  | 80.53d |  | start no earlier than 2009-08-06 08:00 |
| 178 | 3.7.5 | Formar a los usuarios | milestone | 0h | 2009-08-06 08:00 | 2009-08-06 08:00 |  | 80.53d |  | start no earlier than 2009-08-06 08:00 |
| 179 | 3.8 | **E2_Aseguramiento de Calidad del Proceso y del Producto** |  | 0.33d | 2009-09-01 15:15 | 2009-09-02 08:54 |  | 61.41d |  |  |
| 180 | 3.8.1 | Generar el Plan de Calidad |  | 2.64h | 2009-09-01 15:15 | 2009-09-02 08:54 | 157 | 61.41d |  | start no earlier than 2009-08-06 08:00 |
| 181 | 3.9 | **E2_Monitoreo y Control** |  | 0.25d | 2009-09-16 13:39 | 2009-09-16 15:39 |  | 0d |  |  |
| 182 | 3.9.1 | Monitorear el Proyecto |  | 0.64h | 2009-09-16 13:39 | 2009-09-16 14:18 | 172 | 50.86d |  | start no earlier than 2009-08-06 08:00 |
| 183 | 3.9.2 | Realizar Reunión de Equipo de Proyecto |  | 1h | 2009-09-16 13:39 | 2009-09-16 14:39 | 172 | 0d |  | start no earlier than 2009-08-06 08:00 |
| 184 | 3.9.3 | Realizar Reunión de Gerencias |  | 0.5h | 2009-09-16 14:39 | 2009-09-16 15:09 | 183 | 50.69d | 0d | start no earlier than 2009-08-06 08:00 |
| 185 | 3.9.4 | Realizar Reunión con Cliente |  | 0.5h | 2009-09-16 15:09 | 2009-09-16 15:39 | 184 | 50.69d |  | start no earlier than 2009-08-06 08:00 |

| ID | WBS | Task | Type | Duration | Start | Finish | Predecessors | Total slack | Free slack | Constraint |
| --- | --- | --- | --- | --- | --- | --- | --- | --- | --- | --- |
| 186 | 3.10 | **E2_Gestión de Configuración** |  | 0.23d | 2009-09-16 14:39 | 2009-09-16 16:27 |  | 0d |  |  |
| 187 | 3.10.1 | Definición de Líneas base (Base Line) |  | 0.5h | 2009-09-16 15:09 | 2009-09-16 15:39 | 188 | 0d |  | start no earlier than 2009-08-06 08:00 |
| 188 | 3.10.2 | Realizar seguimiento de ítems de Configuración. |  | 0.5h | 2009-09-16 14:39 | 2009-09-16 15:09 | 183 | 0d |  | start no earlier than 2009-08-06 08:00 |
| 189 | 3.10.3 | Realizar versionamiento. |  | 0.3h | 2009-09-16 15:39 | 2009-09-16 15:57 | 187 | 0d |  | start no earlier than 2009-08-06 08:00 |
| 190 | 3.10.4 | Realizar actualizaciones del repositorio |  | 0.5h | 2009-09-16 15:57 | 2009-09-16 16:27 | 189 | 0d |  | start no earlier than 2009-08-06 08:00 |
| 191 | 3.10.5 | Realizar control de cambio. |  | 0.3h | 2009-09-16 14:39 | 2009-09-16 14:57 | 183 | 50.72d | 0d | start no earlier than 2009-08-06 08:00 |
| 192 | 3.10.6 | Realizar Auditorías y Revisiones a la Gestión de Configuración. |  | 0.5h | 2009-09-16 14:57 | 2009-09-16 15:27 | 191 | 50.72d |  | start no earlier than 2009-08-06 08:00 |
| 193 | 4.0 | **Construcción** |  | 69.78d | 2009-08-06 08:00 | 2009-11-11 15:12 |  | 10.75d |  |  |
| 194 | 4.1 | **Iteración 1** |  | 17.75d | 2009-09-16 16:27 | 2009-10-12 14:30 |  | 0d |  |  |
| 195 | 4.1 | **C1_Modelado del Negocio** |  | 0.11d | 2009-09-16 16:27 | 2009-09-17 08:20 |  | 0d |  | must start on 2009-07-06 00:00 |
| 196 | 4.1.1 | Identificador de Actores y CU de Negocio |  | 0.38h | 2009-09-16 16:27 | 2009-09-16 16:50 | 190 | 0d |  | start no earlier than 2009-08-06 08:00 |
| 197 | 4.1.2 | Confección de Diag. De UC de Negocio |  | 0.5h | 2009-09-16 16:50 | 2009-09-17 08:20 | 196 | 0d |  | start no earlier than 2009-08-06 08:00 |
| 198 | 4.2 | **C1_Requerimientos** |  | 1.06d | 2009-09-17 08:20 | 2009-09-18 08:50 |  | 0d |  | must start on 2009-07-08 00:00 |
| 199 | 4.2.1 | Captura de requerimientos | milestone | 0h | 2009-09-17 08:20 | 2009-09-17 08:20 |  | 50.48d |  | start no earlier than 2009-09-17 08:20 |
| 200 | 4.2.2 | Definir alcance del producto | milestone | 0h | 2009-09-17 08:20 | 2009-09-17 08:20 |  | 50.48d |  | start no earlier than 2009-09-17 08:20 |
| 201 | 4.2.3 | Especificar Requerimientos |  | 1h | 2009-09-17 08:20 | 2009-09-17 09:20 | 197 | 0d |  | start no earlier than 2009-08-06 08:00 |
| 202 | 4.2.4 | Validar requerimientos con el cliente |  | 6h | 2009-09-17 09:20 | 2009-09-17 16:20 | 201, 203 | 0d |  | start no earlier than 2009-08-06 08:00 |
| 203 | 4.2.5 | Especificar requerimientos no funcionales |  | 1h | 2009-09-17 08:20 | 2009-09-17 09:20 | 197 | 0d |  | start no earlier than 2009-08-06 08:00 |
| 204 | 4.2.6 | Validar requerimientos con equipo de proyecto |  | 1.5h | 2009-09-17 16:20 | 2009-09-18 08:50 | 202 | 0d |  | start no earlier than 2009-08-06 08:00 |
| 205 | 4.2.7 | Prototipar la interfaz | milestone | 0h | 2009-09-17 08:20 | 2009-09-17 08:20 |  | 50.48d |  | start no earlier than 2009-09-17 08:20 |
| 206 | 4.2.8 | Especificar Reglas de Negocio |  | 1h | 2009-09-17 08:20 | 2009-09-17 09:20 | 197 | 50.36d |  | start no earlier than 2009-08-06 08:00 |
| 207 | 4.3 | **C1_Planificación** |  | 0.44d | 2009-09-18 08:50 | 2009-09-18 13:20 |  | 48.86d |  | must start on 2009-07-13 00:00 |
| 208 | 4.3.1 | Estimar Recursos | milestone | 0h | 2009-09-18 08:50 | 2009-09-18 08:50 |  | 49.42d |  | start no earlier than 2009-09-18 08:50 |
| 209 | 4.3.2 | Realizar estudio de factibilidad | milestone | 0h | 2009-09-18 08:50 | 2009-09-18 08:50 |  | 49.42d |  | start no earlier than 2009-09-18 08:50 |
| 210 | 4.3.3 | Realizar la Programación | milestone | 0h | 2009-09-18 08:50 | 2009-09-18 08:50 |  | 49.42d |  | start no earlier than 2009-09-18 08:50 |
| 211 | 4.3.4 | Definir el Alcance del proyecto (WBS) | milestone | 0h | 2009-09-18 08:50 | 2009-09-18 08:50 |  | 49.42d |  | start no earlier than 2009-09-18 08:50 |
| 212 | 4.3.5 | Identificar Riesgos |  | 1.5h | 2009-09-18 08:50 | 2009-09-18 10:20 | 204 | 48.86d | 0d | start no earlier than 2009-08-06 08:00 |
| 213 | 4.3.6 | Definir Equipo de Proyecto | milestone | 0h | 2009-09-18 08:50 | 2009-09-18 08:50 |  | 49.42d |  | start no earlier than 2009-09-18 08:50 |
| 214 | 4.3.7 | Definir Ciclo de Vida | milestone | 0h | 2009-09-18 08:50 | 2009-09-18 08:50 |  | 49.42d |  | start no earlier than 2009-09-18 08:50 |
| 215 | 4.3.8 | Realizar Plan de Métricas | milestone | 0h | 2009-09-18 08:50 | 2009-09-18 08:50 |  | 49.42d |  | start no earlier than 2009-09-18 08:50 |
| 216 | 4.3.9 | Realizar Plan de Administración de Calidad | milestone | 0h | 2009-09-18 08:50 | 2009-09-18 08:50 |  | 49.42d |  | start no earlier than 2009-09-18 08:50 |
| 217 | 4.3.10 | Realizar Plan de Administración de Configuración | milestone | 0h | 2009-09-18 08:50 | 2009-09-18 08:50 |  | 49.42d |  | start no earlier than 2009-09-18 08:50 |
| 218 | 4.3.11 | Planificar Monitoreo y Control |  | 2h | 2009-09-18 10:20 | 2009-09-18 13:20 | 212 | 48.86d | 0d | start no earlier than 2009-08-06 08:00 |

| ID | WBS | Task | Type | Duration | Start | Finish | Predecessors | Total slack | Free slack | Constraint |
| --- | --- | --- | --- | --- | --- | --- | --- | --- | --- | --- |
| 219 | 4.4 | **C1_Análisis y Diseño** |  | 1.95d | 2009-09-18 08:50 | 2009-09-22 08:26 |  | 0d |  | must start on 2009-07-22 00:00 |
| 220 | 4.4.1 | Análisis y Diseño de la Arquitectura |  | 2h | 2009-09-18 08:50 | 2009-09-18 10:50 | 204 | 0d |  | start no earlier than 2009-08-06 08:00 |
| 221 | 4.4.2 | Análisis y Diseño de las clases |  | 8h | 2009-09-18 10:50 | 2009-09-21 10:50 | 220 | 0d |  | start no earlier than 2009-08-06 08:00 |
| 222 | 4.4.3 | Realizar Realizaciones de Casos de Uso |  | 5.6h | 2009-09-21 10:50 | 2009-09-22 08:26 | 221 | 0d |  | start no earlier than 2009-08-06 08:00 |
| 223 | 4.4.4 | Diseño de BD |  | 2h | 2009-09-21 10:50 | 2009-09-21 13:50 | 221 | 47.92d |  | start no earlier than 2009-08-06 08:00 |
| 224 | 4.5 | **C1_Implementación** |  | 13.25d | 2009-09-22 08:26 | 2009-10-09 10:26 |  | 0d |  | must start on 2009-08-20 00:00 |
| 225 | 4.5.1 | Codificar |  | 56h | 2009-09-22 08:26 | 2009-10-01 08:26 | 222 | 0d |  | start no earlier than 2009-08-06 08:00 |
| 226 | 4.5.2 | Preparar ambiente de Diseño | milestone | 0h | 2009-09-22 08:26 | 2009-09-22 08:26 |  | 47.47d |  | start no earlier than 2009-09-22 08:26 |
| 227 | 4.5.3 | Integrar Software |  | 24h | 2009-10-05 10:26 | 2009-10-08 10:26 | 229 | 0d |  | start no earlier than 2009-08-06 08:00 |
| 228 | 4.5.4 | Generar versión de Software |  | 8h | 2009-10-08 10:26 | 2009-10-09 10:26 | 227 | 0d |  | start no earlier than 2009-08-06 08:00 |
| 229 | 4.5.5 | Realizar pruebas unitarias |  | 18h | 2009-10-01 08:26 | 2009-10-05 10:26 | 225 | 0d |  | start no earlier than 2009-08-06 08:00 |
| 230 | 4.6 | **C1_Pruebas** |  | 14d | 2009-09-22 08:26 | 2009-10-12 08:26 |  | 13.25d |  | must start on 2009-10-14 00:00 |
| 231 | 4.6.1 | Planificar Pruebas |  | 2h | 2009-09-22 08:26 | 2009-09-22 10:26 | 222 | 46.47d | 0d | start no earlier than 2009-08-06 08:00 |
| 232 | 4.6.2 | Diseñar Casos de Prueba |  | 6h | 2009-09-22 10:26 | 2009-09-23 08:26 | 231 | 46.47d |  | start no earlier than 2009-08-06 08:00 |
| 233 | 4.6.3 | Implementar Pruebas |  | 4h | 2009-10-09 10:26 | 2009-10-09 15:26 | 228 | 0d |  | start no earlier than 2009-08-06 08:00 |
| 234 | 4.6.4 | Realizar Pruebas de Aceptación de Usuario | milestone | 0h | 2009-10-09 15:26 | 2009-10-09 15:26 |  | 33.72d |  | start no earlier than 2009-10-09 15:26 |
| 235 | 4.6.5 | Evaluar Pruebas |  | 2h | 2009-10-09 15:26 | 2009-10-12 08:26 | 233 | 0d |  | start no earlier than 2009-08-06 08:00 |
| 236 | 4.7 | **C1_Despliegue** |  | 0.22d | 2009-10-12 08:26 | 2009-10-12 10:12 |  | 0d |  | must start on 2009-07-06 00:00 |
| 237 | 4.7.1 | Probar el Producto |  | 0.5h | 2009-10-12 09:42 | 2009-10-12 10:12 | 239 | 0d |  | start no earlier than 2009-08-06 08:00 |
| 238 | 4.7.2 | Empaquetar Software |  | 0.76h | 2009-10-12 08:26 | 2009-10-12 09:12 | 235 | 0d |  | start no earlier than 2009-08-06 08:00 |
| 239 | 4.7.3 | Instalar Software |  | 0.5h | 2009-10-12 09:12 | 2009-10-12 09:42 | 238 | 0d |  | start no earlier than 2009-08-06 08:00 |
| 240 | 4.7.4 | Proveer asistencia de ayuda a los usuarios | milestone | 0h | 2009-10-12 09:12 | 2009-10-12 09:12 |  | 33.38d |  | start no earlier than 2009-10-12 09:12 |
| 241 | 4.7.5 | Formar a los usuarios | milestone | 0h | 2009-10-12 09:12 | 2009-10-12 09:12 |  | 33.38d |  | start no earlier than 2009-10-12 09:12 |
| 242 | 4.8 | **C1_Aseguramiento de Calidad del Proceso y del Producto** |  | 0.22d | 2009-09-18 10:20 | 2009-09-18 13:06 |  | 49.01d |  | must start on 2009-07-06 00:00 |
| 243 | 4.8.1 | Generar el Plan de Calidad |  | 1.76h | 2009-09-18 10:20 | 2009-09-18 13:06 | 212 | 49.01d |  | start no earlier than 2009-08-06 08:00 |

| ID | WBS | Task | Type | Duration | Start | Finish | Predecessors | Total slack | Free slack | Constraint |
| --- | --- | --- | --- | --- | --- | --- | --- | --- | --- | --- |
| 244 | 4.9 | **C1_Monitoreo y Control** |  | 15.83d | 2009-09-18 13:20 | 2009-10-12 10:57 |  | 15.73d |  | must start on 2009-11-16 00:00 |
| 245 | 4.9.1 | Monitorear el Proyecto |  | 1h | 2009-09-18 13:20 | 2009-09-18 14:20 | 218 | 48.86d |  | start no earlier than 2009-08-06 08:00 |
| 246 | 4.9.2 | Realizar Reunión de Equipo de Proyecto |  | 0.3h | 2009-10-12 10:12 | 2009-10-12 10:30 | 237 | 0d |  | start no earlier than 2009-08-06 08:00 |
| 247 | 4.9.3 | Realizar Reunión de Gerencias |  | 0.3h | 2009-10-12 10:30 | 2009-10-12 10:48 | 246 | 33.16d | 0d | start no earlier than 2009-08-06 08:00 |
| 248 | 4.9.4 | Realizar Reunión con Cliente |  | 0.16h | 2009-10-12 10:48 | 2009-10-12 10:57 | 247 | 33.16d |  | start no earlier than 2009-08-06 08:00 |
| 249 | 4.10 | **C1_Gestión de Configuración** |  | 0.38d | 2009-10-12 10:30 | 2009-10-12 14:30 |  | 0d |  | must start on 2009-07-06 00:00 |
| 250 | 4.10.1 | Definición de Líneas base (Base Line) |  | 0.5h | 2009-10-12 11:30 | 2009-10-12 12:00 | 251 | 0d |  | start no earlier than 2009-08-06 08:00 |
| 251 | 4.10.2 | Realizar seguimiento de ítems de Configuración. |  | 1h | 2009-10-12 10:30 | 2009-10-12 11:30 | 246 | 0d |  | start no earlier than 2009-08-06 08:00 |
| 252 | 4.10.3 | Realizar versionamiento. |  | 0.5h | 2009-10-12 13:00 | 2009-10-12 13:30 | 250 | 0d |  | start no earlier than 2009-08-06 08:00 |
| 253 | 4.10.4 | Realizar actualizaciones del repositorio |  | 0.5h | 2009-10-12 13:30 | 2009-10-12 14:00 | 252 | 0d |  | start no earlier than 2009-08-06 08:00 |
| 254 | 4.10.5 | Realizar control de cambio. |  | 0.5h | 2009-10-12 10:30 | 2009-10-12 11:00 | 246 | 33.15d |  | start no earlier than 2009-08-06 08:00 |
| 255 | 4.10.6 | Realizar Auditorías y Revisiones a la Gestión de Configuración. |  | 0.5h | 2009-10-12 14:00 | 2009-10-12 14:30 | 253 | 32.84d |  | start no earlier than 2009-08-06 08:00 |
| 256 | 4.2 | **Iteración 2** |  | 69.78d | 2009-08-06 08:00 | 2009-11-11 15:12 |  | 10.75d |  |  |
| 257 | 4.1 | **C2_Modelado del Negocio** |  | 0.11d | 2009-10-12 14:00 | 2009-10-12 14:52 |  | 0d |  |  |
| 258 | 4.1.1 | Identificador de Actores y CU de Negocio |  | 0.38h | 2009-10-12 14:00 | 2009-10-12 14:22 | 253 | 0d |  | start no earlier than 2009-08-06 08:00 |
| 259 | 4.1.2 | Confección de Diag. De UC de Negocio |  | 0.5h | 2009-10-12 14:22 | 2009-10-12 14:52 | 258 | 0d |  | start no earlier than 2009-08-06 08:00 |
| 260 | 4.2 | **C2_Requerimientos** |  | 0d | 2009-08-06 08:00 | 2009-08-06 08:00 |  | 80.53d |  |  |
| 261 | 4.2.1 | Captura de requerimientos | milestone | 0h | 2009-08-06 08:00 | 2009-08-06 08:00 |  | 80.53d |  | start no earlier than 2009-08-06 08:00 |
| 262 | 4.2.2 | Definir alcance del producto | milestone | 0h | 2009-08-06 08:00 | 2009-08-06 08:00 |  | 80.53d |  | start no earlier than 2009-08-06 08:00 |
| 263 | 4.2.3 | Especificar Requerimientos | milestone | 0h | 2009-08-06 08:00 | 2009-08-06 08:00 |  | 80.53d |  | start no earlier than 2009-08-06 08:00 |
| 264 | 4.2.4 | Validar requerimientos con el cliente | milestone | 0h | 2009-08-06 08:00 | 2009-08-06 08:00 |  | 80.53d |  | start no earlier than 2009-08-06 08:00 |
| 265 | 4.2.5 | Especificar requerimientos no funcionales | milestone | 0h | 2009-08-06 08:00 | 2009-08-06 08:00 |  | 80.53d |  | start no earlier than 2009-08-06 08:00 |
| 266 | 4.2.6 | Validar requerimientos con equipo de proyecto | milestone | 0h | 2009-08-06 08:00 | 2009-08-06 08:00 |  | 80.53d |  | start no earlier than 2009-08-06 08:00 |
| 267 | 4.2.7 | Prototipar la interfaz | milestone | 0h | 2009-08-06 08:00 | 2009-08-06 08:00 |  | 80.53d |  | start no earlier than 2009-08-06 08:00 |
| 268 | 4.2.8 | Especificar Reglas de Negocio | milestone | 0h | 2009-08-06 08:00 | 2009-08-06 08:00 |  | 80.53d |  | start no earlier than 2009-08-06 08:00 |

| ID | WBS | Task | Type | Duration | Start | Finish | Predecessors | Total slack | Free slack | Constraint |
| --- | --- | --- | --- | --- | --- | --- | --- | --- | --- | --- |
| 269 | 4.3 | **C2_Planificación** |  | 47.95d | 2009-08-06 08:00 | 2009-10-12 16:38 |  | 32.57d |  |  |
| 270 | 4.3.1 | Estimar Recursos | milestone | 0h | 2009-10-12 14:52 | 2009-10-12 14:52 |  | 32.79d |  | start no earlier than 2009-10-12 14:52 |
| 271 | 4.3.2 | Realizar estudio de factibilidad | milestone | 0h | 2009-10-12 14:52 | 2009-10-12 14:52 |  | 32.79d |  | start no earlier than 2009-10-12 14:52 |
| 272 | 4.3.3 | Realizar la Programación | milestone | 0h | 2009-10-12 14:52 | 2009-10-12 14:52 |  | 32.79d |  | start no earlier than 2009-10-12 14:52 |
| 273 | 4.3.4 | Definir el Alcance del proyecto (WBS) | milestone | 0h | 2009-10-12 14:52 | 2009-10-12 14:52 |  | 32.79d |  | start no earlier than 2009-10-12 14:52 |
| 274 | 4.3.5 | Identificar Riesgos |  | 1.76h | 2009-10-12 14:52 | 2009-10-12 16:38 | 259 | 32.24d | 0d | start no earlier than 2009-08-06 08:00 |
| 275 | 4.3.6 | Definir Equipo de Proyecto | milestone | 0h | 2009-10-12 14:52 | 2009-10-12 14:52 |  | 32.79d |  | start no earlier than 2009-10-12 14:52 |
| 276 | 4.3.7 | Definir Ciclo de Vida | milestone | 0h | 2009-10-12 14:52 | 2009-10-12 14:52 |  | 32.79d |  | start no earlier than 2009-10-12 14:52 |
| 277 | 4.3.8 | Realizar Plan de Métricas | milestone | 0h | 2009-10-12 14:52 | 2009-10-12 14:52 |  | 32.79d |  | start no earlier than 2009-10-12 14:52 |
| 278 | 4.3.9 | Realizar Plan de Administración de Calidad | milestone | 0h | 2009-10-12 14:52 | 2009-10-12 14:52 |  | 32.79d |  | start no earlier than 2009-10-12 14:52 |
| 279 | 4.3.10 | Realizar Plan de Administración de Configuración | milestone | 0h | 2009-10-12 14:52 | 2009-10-12 14:52 |  | 32.79d |  | start no earlier than 2009-10-12 14:52 |
| 280 | 4.3.11 | Planificar Monitoreo y Control | milestone | 0h | 2009-08-06 08:00 | 2009-08-06 08:00 |  | 80.53d |  | start no earlier than 2009-08-06 08:00 |
| 281 | 4.4 | **C2_Análisis y Diseño** |  | 0.57d | 2009-10-12 14:52 | 2009-10-13 10:28 |  | 0d |  |  |
| 282 | 4.4.1 | Análisis y Diseño de la Arquitectura |  | 0.6h | 2009-10-12 14:52 | 2009-10-12 15:28 | 259 | 0d |  | start no earlier than 2009-08-06 08:00 |
| 283 | 4.4.2 | Análisis y Diseño de las clases |  | 2h | 2009-10-12 15:28 | 2009-10-13 08:28 | 282 | 0d |  | start no earlier than 2009-08-06 08:00 |
| 284 | 4.4.3 | Realizar Realizaciones de Casos de Uso |  | 2h | 2009-10-13 08:28 | 2009-10-13 10:28 | 283 | 0d |  | start no earlier than 2009-08-06 08:00 |
| 285 | 4.4.4 | Diseño de BD |  | 1h | 2009-10-13 08:28 | 2009-10-13 09:28 | 283 | 32.34d |  | start no earlier than 2009-08-06 08:00 |
| 286 | 4.5 | **C2_Implementación** |  | 17.62d | 2009-10-13 10:28 | 2009-11-05 16:28 |  | 0d |  |  |
| 287 | 4.5.1 | Codificar |  | 72h | 2009-10-13 10:28 | 2009-10-26 10:28 | 284 | 0d |  | start no earlier than 2009-08-06 08:00 |
| 288 | 4.5.2 | Preparar ambiente de Diseño | milestone | 0h | 2009-10-13 10:28 | 2009-10-13 10:28 |  | 32.22d |  | start no earlier than 2009-10-13 10:28 |
| 289 | 4.5.3 | Integrar Software |  | 32h | 2009-10-28 16:28 | 2009-11-03 16:28 | 291 | 0d |  | start no earlier than 2009-08-06 08:00 |
| 290 | 4.5.4 | Generar versión de Software |  | 16h | 2009-11-03 16:28 | 2009-11-05 16:28 | 289 | 0d |  | start no earlier than 2009-08-06 08:00 |
| 291 | 4.5.5 | Realizar pruebas unitarias |  | 21h | 2009-10-26 10:28 | 2009-10-28 16:28 | 287 | 0d |  | start no earlier than 2009-08-06 08:00 |
| 292 | 4.6 | **C2_Pruebas** |  | 21.02d | 2009-10-13 10:28 | 2009-11-11 10:40 |  | 11.19d |  |  |
| 293 | 4.6.1 | Planificar Pruebas |  | 2h | 2009-10-13 10:28 | 2009-10-13 13:28 | 284 | 31.71d | 0d | start no earlier than 2009-08-06 08:00 |
| 294 | 4.6.2 | Diseñar Casos de Prueba |  | 2h | 2009-10-13 13:28 | 2009-10-13 15:28 | 293 | 31.71d |  | start no earlier than 2009-08-06 08:00 |
| 295 | 4.6.3 | Implementar Pruebas |  | 4h | 2009-11-05 16:28 | 2009-11-06 11:28 | 290 | 1.5d |  | start no earlier than 2009-08-06 08:00 |
| 296 | 4.6.4 | Realizar Pruebas de Aceptación de Usuario |  | 16h | 2009-11-05 16:28 | 2009-11-09 16:28 | 290 | 0d |  | start no earlier than 2009-08-06 08:00 |
| 297 | 4.6.5 | Evaluar Pruebas |  | 11.2h | 2009-11-09 16:28 | 2009-11-11 10:40 | 296, 295 | 0d |  | start no earlier than 2009-08-06 08:00 |

| ID | WBS | Task | Type | Duration | Start | Finish | Predecessors | Total slack | Free slack | Constraint |
| --- | --- | --- | --- | --- | --- | --- | --- | --- | --- | --- |
| 298 | 4.7 | **C2_Despliegue** |  | 0.44d | 2009-11-11 10:40 | 2009-11-11 15:12 |  | 10.75d |  |  |
| 299 | 4.7.1 | Probar el Producto |  | 1h | 2009-11-11 14:12 | 2009-11-11 15:12 | 301 | 10.75d |  | start no earlier than 2009-08-06 08:00 |
| 300 | 4.7.2 | Empaquetar Software |  | 1.52h | 2009-11-11 10:40 | 2009-11-11 13:12 | 297 | 10.75d | 0d | start no earlier than 2009-08-06 08:00 |
| 301 | 4.7.3 | Instalar Software |  | 1h | 2009-11-11 13:12 | 2009-11-11 14:12 | 300 | 10.75d | 0d | start no earlier than 2009-08-06 08:00 |
| 302 | 4.7.4 | Proveer asistencia de ayuda a los usuarios | milestone | 0h | 2009-11-11 13:12 | 2009-11-11 13:12 |  | 11d |  | start no earlier than 2009-11-11 13:12 |
| 303 | 4.7.5 | Formar a los usuarios | milestone | 0h | 2009-11-11 13:12 | 2009-11-11 13:12 |  | 11d |  | start no earlier than 2009-11-11 13:12 |
| 304 | 4.8 | **C2_Aseguramiento de Calidad del Proceso y del Producto** |  | 0.33d | 2009-10-12 16:38 | 2009-10-13 10:16 |  | 32.24d |  |  |
| 305 | 4.8.1 | Generar el Plan de Calidad |  | 2.64h | 2009-10-12 16:38 | 2009-10-13 10:16 | 274 | 21.58d |  | start no earlier than 2009-08-06 08:00 |
| 306 | 4.9 | **C2_Monitoreo y Control** |  | 0.2d | 2009-11-11 10:40 | 2009-11-11 13:19 |  | 0d |  |  |
| 307 | 4.9.1 | Monitorear el Proyecto |  | 1h | 2009-11-11 10:40 | 2009-11-11 11:40 | 297 | 11.06d |  | start no earlier than 2009-08-06 08:00 |
| 308 | 4.9.2 | Realizar Reunión de Equipo de Proyecto |  | 0.32h | 2009-11-11 10:40 | 2009-11-11 11:00 | 297 | 0d |  | start no earlier than 2009-08-06 08:00 |
| 309 | 4.9.3 | Realizar Reunión de Gerencias |  | 0.32h | 2009-11-11 11:00 | 2009-11-11 11:19 | 308 | 10.98d | 0d | start no earlier than 2009-08-06 08:00 |
| 310 | 4.9.4 | Realizar Reunión con Cliente |  | 1h | 2009-11-11 11:19 | 2009-11-11 13:19 | 309 | 10.98d |  | start no earlier than 2009-08-06 08:00 |
| 311 | 4.10 | **C2_Gestión de Configuración** |  | 0.38d | 2009-11-11 11:00 | 2009-11-11 15:00 |  | 0d |  |  |
| 312 | 4.10.1 | Definición de Líneas base (Base Line) |  | 0.5h | 2009-11-11 13:00 | 2009-11-11 13:30 | 313 | 0d |  | start no earlier than 2009-08-06 08:00 |
| 313 | 4.10.2 | Realizar seguimiento de ítems de Configuración. |  | 1h | 2009-11-11 11:00 | 2009-11-11 12:00 | 308 | 0d |  | start no earlier than 2009-08-06 08:00 |
| 314 | 4.10.3 | Realizar versionamiento. |  | 0.5h | 2009-11-11 13:30 | 2009-11-11 14:00 | 312 | 0d |  | start no earlier than 2009-08-06 08:00 |
| 315 | 4.10.4 | Realizar actualizaciones del repositorio |  | 0.5h | 2009-11-11 14:00 | 2009-11-11 14:30 | 314 | 0d |  | start no earlier than 2009-08-06 08:00 |
| 316 | 4.10.5 | Realizar control de cambio. |  | 0.5h | 2009-11-11 11:00 | 2009-11-11 11:30 | 308 | 11.09d |  | start no earlier than 2009-08-06 08:00 |
| 317 | 4.10.6 | Realizar Auditorías y Revisiones a la Gestión de Configuración. |  | 0.5h | 2009-11-11 14:30 | 2009-11-11 15:00 | 315 | 10.78d |  | start no earlier than 2009-08-06 08:00 |
| 318 | 5.0 | **Transición** |  | 80.53d | 2009-08-06 08:00 | 2009-11-26 13:12 |  | 0d |  | must start on 2009-07-06 00:00 |
| 319 | 5.1 | **T_Modelado del Negocio** |  | 0d | 2009-08-06 08:00 | 2009-08-06 08:00 |  | 80.53d |  | must start on 2009-07-06 00:00 |
| 320 | 5.1.1 | Identificador de Actores y CU de Negocio | milestone | 0h | 2009-08-06 08:00 | 2009-08-06 08:00 |  | 80.53d |  | start no earlier than 2009-08-06 08:00 |
| 321 | 5.1.2 | Confección de Diag. De UC de Negocio | milestone | 0h | 2009-08-06 08:00 | 2009-08-06 08:00 |  | 80.53d |  | start no earlier than 2009-08-06 08:00 |

| ID | WBS | Task | Type | Duration | Start | Finish | Predecessors | Total slack | Constraint |
| --- | --- | --- | --- | --- | --- | --- | --- | --- | --- |
| 322 | 5.2 | **T_Requerimientos** |  | 0d | 2009-08-06 08:00 | 2009-08-06 08:00 |  | 80.53d | must start on 2009-07-08 00:00 |
| 323 | 5.2.1 | Captura de requerimientos | milestone | 0h | 2009-08-06 08:00 | 2009-08-06 08:00 |  | 80.53d | start no earlier than 2009-08-06 08:00 |
| 324 | 5.2.2 | Definir alcance del producto | milestone | 0h | 2009-08-06 08:00 | 2009-08-06 08:00 |  | 80.53d | start no earlier than 2009-08-06 08:00 |
| 325 | 5.2.3 | Especificar Requerimientos | milestone | 0h | 2009-08-06 08:00 | 2009-08-06 08:00 |  | 80.53d | start no earlier than 2009-08-06 08:00 |
| 326 | 5.2.4 | Validar requerimientos con el cliente | milestone | 0h | 2009-08-06 08:00 | 2009-08-06 08:00 |  | 80.53d | start no earlier than 2009-08-06 08:00 |
| 327 | 5.2.5 | Especificar requerimientos no funcionales | milestone | 0h | 2009-08-06 08:00 | 2009-08-06 08:00 |  | 80.53d | start no earlier than 2009-08-06 08:00 |
| 328 | 5.2.6 | Validar requerimientos con equipo de proyecto | milestone | 0h | 2009-08-06 08:00 | 2009-08-06 08:00 |  | 80.53d | start no earlier than 2009-08-06 08:00 |
| 329 | 5.2.7 | Prototipar la interfaz | milestone | 0h | 2009-08-06 08:00 | 2009-08-06 08:00 |  | 80.53d | start no earlier than 2009-08-06 08:00 |
| 330 | 5.2.8 | Especificar Reglas de Negocio | milestone | 0h | 2009-08-06 08:00 | 2009-08-06 08:00 |  | 80.53d | start no earlier than 2009-08-06 08:00 |
| 331 | 5.3 | **T_Planificación** |  | 0d | 2009-08-06 08:00 | 2009-08-06 08:00 |  | 80.53d | must start on 2009-07-13 00:00 |
| 332 | 5.3.1 | Estimar Recursos | milestone | 0h | 2009-08-06 08:00 | 2009-08-06 08:00 |  | 80.53d | start no earlier than 2009-08-06 08:00 |
| 333 | 5.3.2 | Realizar estudio de factibilidad | milestone | 0h | 2009-08-06 08:00 | 2009-08-06 08:00 |  | 80.53d | start no earlier than 2009-08-06 08:00 |
| 334 | 5.3.3 | Realizar la Programación | milestone | 0h | 2009-08-06 08:00 | 2009-08-06 08:00 |  | 80.53d | start no earlier than 2009-08-06 08:00 |
| 335 | 5.3.4 | Definir el Alcance del proyecto (WBS) | milestone | 0h | 2009-08-06 08:00 | 2009-08-06 08:00 |  | 80.53d | start no earlier than 2009-08-06 08:00 |
| 336 | 5.3.5 | Identificar Riesgos | milestone | 0h | 2009-08-06 08:00 | 2009-08-06 08:00 |  | 80.53d | start no earlier than 2009-08-06 08:00 |
| 337 | 5.3.6 | Definir Equipo de Proyecto | milestone | 0h | 2009-08-06 08:00 | 2009-08-06 08:00 |  | 80.53d | start no earlier than 2009-08-06 08:00 |
| 338 | 5.3.7 | Definir Ciclo de Vida | milestone | 0h | 2009-08-06 08:00 | 2009-08-06 08:00 |  | 80.53d | start no earlier than 2009-08-06 08:00 |
| 339 | 5.3.8 | Realizar Plan de Métricas | milestone | 0h | 2009-08-06 08:00 | 2009-08-06 08:00 |  | 80.53d | start no earlier than 2009-08-06 08:00 |
| 340 | 5.3.9 | Realizar Plan de Administración de Calidad | milestone | 0h | 2009-08-06 08:00 | 2009-08-06 08:00 |  | 80.53d | start no earlier than 2009-08-06 08:00 |
| 341 | 5.3.10 | Realizar Plan de Administración de Configuración | milestone | 0h | 2009-08-06 08:00 | 2009-08-06 08:00 |  | 80.53d | start no earlier than 2009-08-06 08:00 |
| 342 | 5.3.11 | Planificar Monitoreo y Control | milestone | 0h | 2009-08-06 08:00 | 2009-08-06 08:00 |  | 80.53d | start no earlier than 2009-08-06 08:00 |
| 343 | 5.4 | **T_Análisis y Diseño** |  | 0.17d | 2009-11-11 14:30 | 2009-11-11 15:54 |  | 0d | must start on 2009-07-29 00:00 |
| 344 | 5.4.1 | Análisis y Diseño de la Arquitectura | milestone | 0h | 2009-11-11 14:30 | 2009-11-11 14:30 |  | 10.84d | start no earlier than 2009-11-11 14:30 |
| 345 | 5.4.2 | Análisis y Diseño de las clases |  | 1.4h | 2009-11-11 14:30 | 2009-11-11 15:54 | 315 | 0d | start no earlier than 2009-08-06 08:00 |
| 346 | 5.4.3 | Realizar Realizaciones de Casos de Uso | milestone | 0h | 2009-11-11 14:30 | 2009-11-11 14:30 |  | 10.84d | start no earlier than 2009-11-11 14:30 |
| 347 | 5.4.4 | Diseño de BD | milestone | 0h | 2009-11-11 14:30 | 2009-11-11 14:30 |  | 10.84d | start no earlier than 2009-11-11 14:30 |

| ID | WBS | Task | Type | Duration | Start | Finish | Predecessors | Total slack | Free slack | Constraint |
| --- | --- | --- | --- | --- | --- | --- | --- | --- | --- | --- |
| 348 | 5.5 | **T_Implementación** |  | 2.2d | 2009-11-11 15:54 | 2009-11-16 08:30 |  | 0d |  | must start on 2009-08-21 00:00 |
| 349 | 5.5.1 | Codificar |  | 8h | 2009-11-11 15:54 | 2009-11-12 15:54 | 345 | 0d |  | start no earlier than 2009-08-06 08:00 |
| 350 | 5.5.2 | Preparar ambiente de Diseño | milestone | 0h | 2009-11-11 15:54 | 2009-11-11 15:54 |  | 10.66d |  | start no earlier than 2009-11-11 15:54 |
| 351 | 5.5.3 | Integrar Software |  | 4.6h | 2009-11-13 10:54 | 2009-11-13 16:30 | 353 | 0d |  | start no earlier than 2009-08-06 08:00 |
| 352 | 5.5.4 | Generar versión de Software |  | 1h | 2009-11-13 16:30 | 2009-11-16 08:30 | 351 | 0d |  | start no earlier than 2009-08-06 08:00 |
| 353 | 5.5.5 | Realizar pruebas unitarias |  | 4h | 2009-11-12 15:54 | 2009-11-13 10:54 | 349 | 0d |  | start no earlier than 2009-08-06 08:00 |
| 354 | 5.6 | **T_Pruebas** |  | 7.36d | 2009-11-11 15:54 | 2009-11-23 09:48 |  | 2.2d |  | must start on 2009-10-14 00:00 |
| 355 | 5.6.1 | Planificar Pruebas |  | 4h | 2009-11-11 15:54 | 2009-11-12 10:54 | 345 | 9.66d | 0d | start no earlier than 2009-08-06 08:00 |
| 356 | 5.6.2 | Diseñar Casos de Prueba |  | 4h | 2009-11-12 10:54 | 2009-11-12 15:54 | 355 | 9.66d |  | start no earlier than 2009-08-06 08:00 |
| 357 | 5.6.3 | Implementar Pruebas |  | 4h | 2009-11-16 08:30 | 2009-11-16 13:30 | 352 | 0d |  | start no earlier than 2009-08-06 08:00 |
| 358 | 5.6.4 | Realizar Pruebas de Aceptación de Usuario |  | 24h | 2009-11-16 13:30 | 2009-11-19 13:30 | 357 | 0d |  | start no earlier than 2009-08-06 08:00 |
| 359 | 5.6.5 | Evaluar Pruebas |  | 13.3h | 2009-11-19 13:30 | 2009-11-23 09:48 | 357, 358 | 0d |  | start no earlier than 2009-08-06 08:00 |
| 360 | 5.7 | **T_Despliegue** |  | 2.75d | 2009-11-23 09:48 | 2009-11-25 16:48 |  | 0d |  | must start on 2009-07-06 00:00 |
| 361 | 5.7.1 | Probar el Producto |  | 6h | 2009-11-25 09:48 | 2009-11-25 16:48 | 363 | 0d |  | start no earlier than 2009-08-06 08:00 |
| 362 | 5.7.2 | Empaquetar Software |  | 8h | 2009-11-23 09:48 | 2009-11-24 09:48 | 359 | 0d |  | start no earlier than 2009-08-06 08:00 |
| 363 | 5.7.3 | Instalar Software |  | 8h | 2009-11-24 09:48 | 2009-11-25 09:48 | 362 | 0d |  | start no earlier than 2009-08-06 08:00 |
| 364 | 5.7.4 | Proveer asistencia de ayuda a los usuarios |  | 4h | 2009-11-25 09:48 | 2009-11-25 14:48 | 363 | 0.8d |  | start no earlier than 2009-08-06 08:00 |
| 365 | 5.7.5 | Formar a los usuarios |  | 4h | 2009-11-23 09:48 | 2009-11-23 14:48 | 359 | 2.8d |  | start no earlier than 2009-08-06 08:00 |
| 366 | 5.8 | **T_Aseguramiento de Calidad del Proceso y del Producto** |  | 0.55d | 2009-11-11 15:54 | 2009-11-12 11:18 |  | 10.11d |  | must start on 2009-07-06 00:00 |
| 367 | 5.8.1 | Generar el Plan de Calidad |  | 4.4h | 2009-11-11 15:54 | 2009-11-12 11:18 | 345 | 10.11d |  | start no earlier than 2009-08-06 08:00 |
| 368 | 5.9 | **T_Monitoreo y Control** |  | 0.55d | 2009-11-25 16:48 | 2009-11-26 13:12 |  | 0d |  | must start on 2009-11-24 00:00 |
| 369 | 5.9.1 | Monitorear el Proyecto | milestone | 0h | 2009-11-25 16:48 | 2009-11-25 16:48 |  | 0.55d |  | start no earlier than 2009-11-25 16:48 |
| 370 | 5.9.2 | Realizar Reunión de Equipo de Proyecto |  | 0.5h | 2009-11-25 16:48 | 2009-11-26 08:18 | 361 | 0d |  | start no earlier than 2009-08-06 08:00 |
| 371 | 5.9.3 | Realizar Reunión de Gerencias |  | 0.5h | 2009-11-26 08:18 | 2009-11-26 08:48 | 370 | 0d |  | start no earlier than 2009-08-06 08:00 |
| 372 | 5.9.4 | Realizar Reunión con Cliente |  | 3.4h | 2009-11-26 08:48 | 2009-11-26 13:12 | 371 | 0d |  | start no earlier than 2009-08-06 08:00 |

| ID | WBS | Task | Duration | Start | Finish | Predecessors | Total slack | Constraint |
| --- | --- | --- | --- | --- | --- | --- | --- | --- |
| 373 | 5.10 | **T_Gestión de Configuración** | 0.42d | 2009-11-26 08:18 | 2009-11-26 11:42 |  | 0.06d | must start on 2009-07-06 00:00 |
| 374 | 5.10.1 | Definición de Líneas base (Base Line) | 0.5h | 2009-11-26 09:18 | 2009-11-26 09:48 | 375 | 0.06d | start no earlier than 2009-08-06 08:00 |
| 375 | 5.10.2 | Realizar seguimiento de ítems de Configuración. | 1h | 2009-11-26 08:18 | 2009-11-26 09:18 | 370 | 0.06d | start no earlier than 2009-08-06 08:00 |
| 376 | 5.10.3 | Realizar versionamiento. | 0.5h | 2009-11-26 09:48 | 2009-11-26 10:18 | 374 | 0.06d | start no earlier than 2009-08-06 08:00 |
| 377 | 5.10.4 | Realizar actualizaciones del repositorio | 0.9h | 2009-11-26 10:18 | 2009-11-26 11:12 | 376 | 0.06d | start no earlier than 2009-08-06 08:00 |
| 378 | 5.10.5 | Realizar control de cambio. | 0.5h | 2009-11-26 08:18 | 2009-11-26 08:48 | 370 | 0.42d | start no earlier than 2009-08-06 08:00 |
| 379 | 5.10.6 | Realizar Auditorías y Revisiones a la Gestión de Configuración. | 0.5h | 2009-11-26 11:12 | 2009-11-26 11:42 | 377 | 0.06d | start no earlier than 2009-08-06 08:00 |
